# AI Conference

Schedule from ProjectLibre, 2020-05-05 to 2020-09-23.

## Calendars

- Standard: Mon-Fri 08:00-12:00, 13:00-17:00; Sat-Sun off.

## Resources

| Resource | Rate | Cost per use |
| --- | --- | --- |
| Unassigned |  |  |
| Project Manager | 75 |  |
| PMO Staff | 35 |  |
| Operations Manager | 40 |  |
| Operations Officer | 25 |  |
| Food and Beverages |  | 33000 |
| Marketing |  | 2500 |
| Photography |  | 2300 |
| MC/Hosts |  | 1800 |
| Security |  | 1920 |
| Rooms And Equipment |  | 7500 |
| Tables/Chairs |  | 1500 |
| Decoration |  | 500 |
| Music | 30 |  |
| Lighting | 30 |  |
| Furnishing |  | 300 |
| Signage |  | 260 |
| On-Site Help | 20 |  |
| Catering Team |  | 2000 |
| Cleaning staff | 20 |  |

## Schedule

| ID | WBS | Task | Duration | Start | Finish | Predecessors | Constraint | Resources |
| --- | --- | --- | --- | --- | --- | --- | --- | --- |
| 1 | 1 | **TGIF AI Conference** | 10200e% | 2020-05-05 | 2020-09-23 |  |  |  |
| 2 | 1.1 | **Planning** | 1700e% | 2020-05-05 | 2020-05-27 |  | start no earlier than 2020-05-05 |  |
| 3 | 1.1.1 | Agenda/Content | 600e% | 2020-05-05 | 2020-05-12 |  |  | Project Manager [68.83%]; PMO Staff [31.17%] |
| 4 | 1.1.2 | Location Selection | 300e% | 2020-05-13 | 2020-05-15 | 3 |  | Project Manager [50%]; Operations Manager |
| 5 | 1.1.3 | Speaker Strategy | 200e% | 2020-05-13 | 2020-05-14 | 3 |  | Project Manager [68.57%]; PMO Staff [91.43%] |
| 6 | 1.1.4 | Attendee Strategy | 200e% | 2020-05-15 | 2020-05-18 | 5 |  | Project Manager [60%]; PMO Staff [70%] |
| 7 | 1.1.5 | Vendors/Sponsors | 700e% | 2020-05-19 | 2020-05-27 | 3, 5, 6 |  | Project Manager; PMO Staff [50%] |
| 8 | 1.2 | **Content (Speakers/Experts)** | 1700e% | 2020-05-28 | 2020-06-19 | 7 |  |  |
| 9 | 1.2.1 | **Identifying** | 1000e% | 2020-05-28 | 2020-06-10 | 7 |  |  |
| 10 | 1.2.1.1 | Academia | 1000e% | 2020-05-28 | 2020-06-10 | 7 |  | PMO Staff [50%] |
| 11 | 1.2.1.2 | Industry | 1000e% | 2020-05-28 | 2020-06-10 | 7 |  | PMO Staff [50%] |
| 12 | 1.2.1.3 | Public Sector | 1000e% | 2020-05-28 | 2020-06-10 | 7 |  | PMO Staff [50%] |
| 13 | 1.2.2 | Confirming | 700e% | 2020-06-11 | 2020-06-19 | 10, 11, 12 |  | Project Manager [28.57%]; PMO Staff [28.57%] |
| 14 | 1.3 | **Partnerships/Procurement** | 500e% | 2020-06-22 | 2020-06-26 | 13 |  |  |
| 15 | 1.3.1 | Tech companies | 500e% | 2020-06-22 | 2020-06-26 | 13 |  | Project Manager [25%]; PMO Staff [25%] |
| 16 | 1.3.2 | AI Vendors | 500e% | 2020-06-22 | 2020-06-26 | 13 |  | Project Manager [25%]; PMO Staff [25%] |
| 17 | 1.4 | **Attendee Management** | 2700e% | 2020-06-22 | 2020-07-28 | 8 |  |  |
| 18 | 1.4.1 | Guest List | 200e% | 2020-06-22 | 2020-06-23 | 8 |  | Operations Officer |
| 19 | 1.4.2 | RSVPs | 2000e% | 2020-06-24 | 2020-07-21 | 18 |  | Operations Officer [15.62%] |
| 20 | 1.4.3 | Handouts | 500e% | 2020-07-22 | 2020-07-28 | 19 |  | Operations Officer [25%] |
| 21 | 1.4.4 | Special Needs | 300e% | 2020-07-22 | 2020-07-24 | 19 |  | Operations Officer [62.5%] |
| 22 | 1.5 | **Marketing/Communications** | 5000e% | 2020-06-22 | 2020-08-28 |  |  |  |
| 23 | 1.5.1 | Physical | 4300e% | 2020-06-22 | 2020-08-19 | 13 |  | Marketing |
| 24 | 1.5.2 | Website | 2000e% | 2020-06-22 | 2020-07-17 | 13 |  | Marketing |
| 25 | 1.5.3 | Social Media | 3000e% | 2020-06-22 | 2020-07-31 | 13 |  | Marketing |
| 26 | 1.5.4 | Press/Media | 600e% | 2020-06-22 | 2020-06-29 | 13 |  | Marketing |
| 27 | 1.5.5 | Merchandise | 1000e% | 2020-06-22 | 2020-07-03 | 13 |  | Marketing |
| 28 | 1.5.6 | Feedback/Sales Analysis | 700e% | 2020-08-20 | 2020-08-28 | 24, 25, 26, 27, 23 | start no earlier than 2020-04-06 | Marketing |

Notes:
- 1: 3 days conference with about 100 attendee
- 2: Project Manager will monitor entire planning phase
- 13: Only after identifying all contents, we can do the confirmation. Confirming needs consider responding time
- 14: Traveling between partners/vendors companies and negotiating with them make take long duration but not long work hours per day
- 19: Need to consider the responding time, so the duration is long but the actual working hours is not very long
- 22: We decided to outsourse our marketing task including website development and advertising activities

| ID | WBS | Task | Duration | Start | Finish | Predecessors | Constraint | Resources |
| --- | --- | --- | --- | --- | --- | --- | --- | --- |
| 29 | 1.6 | **Conference Operations** | 800e% | 2020-08-31 | 2020-09-09 | 22 |  |  |
| 30 | 1.6.1 | **Venue** | 800e% | 2020-08-31 | 2020-09-09 | 22 |  |  |
| 31 | 1.6.1.1 | Booking | 100e% | 2020-08-31 | 2020-08-31 | 17 |  | Operations Officer |
| 32 | 1.6.1.2 | Rooms and Equipment | 300e% | 2020-09-01 | 2020-09-03 | 31 |  | Rooms And Equipment |
| 33 | 1.6.1.3 | Tables/Chairs | 300e% | 2020-09-01 | 2020-09-03 | 31 |  | Tables/Chairs |
| 34 | 1.6.1.4 | Decorations | 100e% | 2020-09-04 | 2020-09-04 | 33 |  | Decoration |
| 35 | 1.6.1.5 | Music | 300e% | 2020-09-07 | 2020-09-09 | 34 |  | Music |
| 36 | 1.6.1.6 | Lighting | 300e% | 2020-09-07 | 2020-09-09 | 34 |  | Lighting |
| 37 | 1.6.1.7 | Furnishing | 300e% | 2020-09-04 | 2020-09-08 | 33 |  | Furnishing |
| 38 | 1.6.1.8 | Signage | 200e% | 2020-09-04 | 2020-09-07 | 33 |  | Signage |
| 39 | 1.6.1.9 | Food and Beverage | 300e% | 2020-09-01 | 2020-09-03 | 31 |  | Food and Beverages |
| 40 | 1.6.2 | Security | 200e% | 2020-09-04 | 2020-09-07 | 32 |  | Operations Manager [37.5%] |
| 41 | 1.6.3 | **Technology** | 300e% | 2020-09-04 | 2020-09-08 | 32 |  |  |
| 42 | 1.6.3.1 | Live Streaming | 300e% | 2020-09-04 | 2020-09-08 | 32 |  | Photography [20%] |
| 43 | 1.6.3.2 | Audio/Visual | 300e% | 2020-09-04 | 2020-09-08 | 32 |  | Photography [20%] |
| 44 | 1.7 | **Administration** | 6500e% | 2020-06-22 | 2020-09-18 |  | start no earlier than 2020-03-03 |  |
| 45 | 1.7.1 | **Staffing (Volutneers/Workers)** | 1400e% | 2020-08-31 | 2020-09-17 |  |  |  |
| 46 | 1.7.1.1 | Ticketing | 500e% | 2020-08-31 | 2020-09-04 | 22 |  | On-Site Help [50%] |
| 47 | 1.7.1.2 | Security | 300e% | 2020-09-10 | 2020-09-14 | 29 |  | Security |
| 48 | 1.7.1.3 | Tables Set Up | 300e% | 2020-09-04 | 2020-09-08 | 33 |  | On-Site Help [25%] |
| 49 | 1.7.1.4 | MC/Hosts | 300e% | 2020-09-10 | 2020-09-14 | 29 |  | MC/Hosts |
| 50 | 1.7.1.5 | Photography | 300e% | 2020-09-09 | 2020-09-11 | 41 |  | Photography [60%] |
| 51 | 1.7.1.6 | Caterers | 300e% | 2020-09-04 | 2020-09-08 | 39 |  | Catering Team |
| 52 | 1.7.1.7 | Cleaning Staff | 300e% | 2020-09-10 | 2020-09-14 | 29 |  | Cleaning staff |
| 53 | 1.7.1.8 | Breakdown | 300e% | 2020-09-15 | 2020-09-17 | 52 |  | On-Site Help |

Notes:
- 31: Need staff to book and confirm the final Venue
- 32: The fix cost for renting rooms and equipments
- 33: The fix cost for renting tables and chairs
- 34: The fix cost for decorations in the venue
- 35: One operation officer will be assigned to control the music playing during the conference
- 36: One operation officer will be assigned to control the lighting during the conference
- 37: The fixed cost for furnishing other than tables and chairs
- 38: Will buy signage from Amazon
- 39: Serve breakfast, lunch, snacks and baverage for 115(prepare for extra 15 persons, just in case ) people for 3 days. Server dinner for 115 people for the first two days. Total food and beverage fee per person: $275 ((15(Breakfast price per meal)+25(Lunch price per meal)+10(Snacks per person per day) +15(Baverage per person per day)))*3+40(Dinner price per meal)*2)
- 40: Confirming or book security company
- 41: Hire photographer
- 46: Ticket checking
- 48: Operated by On-Site Help team(Consist of operation staffs and volunteers)
- 49: MC/Host will be one of the specker or experts
- 51: Hire catering team

| ID | WBS | Task | Duration | Start | Finish | Predecessors | Resources |
| --- | --- | --- | --- | --- | --- | --- | --- |
| 54 | 1.7.2 | **Budget** | 6500e% | 2020-06-22 | 2020-09-18 |  |  |
| 55 | 1.7.2.1 | **Revenue** | 2250e% | 2020-07-06 | 2020-08-05 | 27 |  |
| 56 | 1.7.2.1.1 | Ticket MGMT | 1250e% | 2020-07-06 | 2020-07-22 | 27 | Operations Manager; PMO Staff |
| 57 | 1.7.2.1.2 | Sponsor MGMT | 1000e% | 2020-07-22 | 2020-08-05 | 56 | PMO Staff [25%]; Operations Manager [25%] |
| 58 | 1.7.2.2 | Expenses | 6500e% | 2020-06-22 | 2020-09-18 | 13 | Project Manager [8.33%]; PMO Staff [8.33%]; Operations Manager [8.33%] |
| 59 | 1.8 | Project Close-Out | 300e% | 2020-09-21 | 2020-09-23 | 53, 57, 58 | Project Manager [25%]; PMO Staff [25%]; Operations Manager [25%]; Operations Officer [25%] |

Notes:
- 56: Start from ticket selling
- 58: Throughout the entire event
